Schedule from MS Project, 2015-10-29 to 2015-11-30, A marks actual dates.
Microsoft

## Calendars

- 标准: Mon-Fri 08:00-12:00, 13:00-17:00; Sat-Sun off.

## Resources

| Resource |
| --- |
| 林涛 |
| 叶庆玉 |
| 华顺财 |
| 柳兆峰 |

## Schedule

| ID | WBS | Task | Type | Duration | Start | Finish | Complete | Remaining | Actual finish | Total slack | Resources | Work | Actual work |
| --- | --- | --- | --- | --- | --- | --- | --- | --- | --- | --- | --- | --- | --- |
| 1 | 1 | **V2.4.6** |  | 2d | 2015-10-29 09:00 A | 2015-10-30 18:00 A | 100% |  |  |  |  | 31.4h | 31.4h |
| 2 | 1.1 | 耳温模块开放 | manual | 0.5d | 2015-10-29 09:00 A | 2015-10-29 14:00 A | 100% |  |  |  | 林涛; 华顺财 | 8h | 8h |
| 3 | 1.2 | 第三方调用 | manual | 2d | 2015-10-29 09:00 A | 2015-10-30 18:00 A | 100% |  |  |  | 林涛 | 17h | 17h |
| 4 | 1.3 | 血压姿势调整 | manual | 0.8d | 2015-10-29 09:00 A | 2015-10-29 16:24 A | 100% |  |  |  | 叶庆玉 | 6.4h | 6.4h |
| 6 | 2 | **V2.4.7** |  | 12d | 2015-10-29 09:00 A | 2015-11-13 18:00 | 50% | 6.04d |  |  |  | 129.6h | 64.8h |
| 7 | 2.1 | **体脂模块接入** |  | 7d | 2015-10-29 09:00 A | 2015-11-09 09:00 | 57% | 3.02d |  | 0d |  | 113.6h | 64.8h |
| 8 | 2.1.1 | 体脂送检版合并到主干 | manual | 0.8d | 2015-10-29 09:00 A | 2015-10-29 16:24 A | 100% |  |  |  | 林涛 | 6.4h | 6.4h |
| 9 | 2.1.2 | 测量流程 | manual | 0.2d | 2015-11-03 09:00 A | 2015-11-03 10:36 | 75% | 0.05d |  |  | 柳兆峰; 叶庆玉 | 3.2h | 2.4h |
| 10 | 2.1.3 | 体脂规则库 | manual | 3d | 2015-11-04 09:00 A | 2015-11-06 18:00 A | 100% |  |  |  | 华顺财 | 24h | 24h |
| 11 | 2.1.4 | 体脂曲线 | manual | 4d | 2015-11-02 09:00 A | 2015-11-05 18:00 | 75% | 1d |  |  | 柳兆峰 | 32h | 24h |
| 12 | 2.1.5 | 体脂数据同步 | manual | 4d | 2015-11-03 09:00 | 2015-11-06 18:00 |  |  |  |  | 林涛 | 32h |  |
| 13 | 2.1.6 | 水平刻度控件 | manual | 1d | 2015-11-06 09:00 A | 2015-11-09 09:00 A | 100% |  |  |  | 林涛 | 8h | 8h |
| 14 | 2.1.7 | 数据列表 | manual | 1d | 2015-11-02 09:00 | 2015-11-02 18:00 |  |  |  |  | 柳兆峰 | 8h |  |
| 15 | 2.2 | 血氧长期曲线 | manual | 2d | 2015-11-02 09:00 | 2015-11-03 18:00 |  |  |  |  | 林涛 | 16h |  |
| 17 | 3 | **V3.0** |  | 23d | 2015-10-29 09:00 A | 2015-11-30 18:00 | 66% | 7.79d |  |  |  | 272h | 188h |
| 18 | 3.1 | **尿检模块接入** |  | 17d | 2015-10-29 09:00 A | 2015-11-20 18:00 | 66% | 5.76d |  |  |  | 272h | 188h |
| 19 | 3.1.1 | 测量流程 | manual | 1d | 2015-10-29 09:00 A | 2015-10-30 09:00 A | 100% |  |  |  | 柳兆峰; 叶庆玉 | 16h | 16h |
| 20 | 3.1.2 | 首页显示 | manual | 1d | 2015-10-29 09:00 A | 2015-10-30 09:00 A | 100% |  |  |  | 柳兆峰; 叶庆玉 | 16h | 16h |
| 21 | 3.1.3 | 数据列表 | manual | 1d | 2015-10-29 09:00 A | 2015-10-30 09:00 A | 100% |  |  |  | 柳兆峰; 叶庆玉 | 16h | 16h |
| 22 | 3.1.4 | 统计分析 | manual | 7d | 2015-10-30 09:00 A | 2015-11-09 18:00 | 50% | 3.5d |  |  | 叶庆玉 | 56h | 28h |
| 23 | 3.1.5 | 近期曲线 | manual | 8d | 2015-10-29 09:00 A | 2015-11-09 18:00 | 50% | 4d |  |  | 柳兆峰 | 64h | 32h |
| 24 | 3.1.6 | 尿检规则库 | manual | 10d | 2015-11-05 09:00 A | 2015-11-18 18:00 A | 100% |  |  |  | 华顺财 | 80h | 80h |
| 25 | 3.1.7 | 数据同步 | manual | 3d? | 2015-11-04 09:00 | 2015-11-09 09:00 |  |  |  |  | 林涛 | 24h |  |
| 27 | 4 | **V1.0.4** |  | 2d | 2015-10-29 09:00 A | 2015-10-30 18:00 | 100% |  | 2015-10-29 18:00 |  |  | 20h | 20h |
| 28 | 4.1 | 耳温模块开放 | manual | 1d | 2015-10-29 09:00 A | 2015-10-29 18:00 A | 100% |  |  |  | 华顺财; 林涛 | 16h | 16h |
| 29 | 4.2 | 修改宝宝列表 | manual | 0.3d | 2015-10-29 09:00 A | 2015-10-29 11:24 A | 100% |  |  |  | 华顺财 | 2.4h | 2.4h |
| 30 | 4.3 | 血压姿势调整 | manual | 0.2d | 2015-10-29 14:00 A | 2015-10-29 15:36 A | 100% |  |  |  | 叶庆玉 | 1.6h | 1.6h |

| ID | WBS | Task | Type | Duration | Start | Finish | Predecessors | Complete | Remaining | Actual start | Resources | Work | Actual work |
| --- | --- | --- | --- | --- | --- | --- | --- | --- | --- | --- | --- | --- | --- |
| 32 | 5 | **V1.0.5** |  | 12d | 2015-10-29 09:00 | 2015-11-13 18:00 |  |  |  |  |  | 28h |  |
| 33 | 5.1 | **体脂模块接入** |  | 1d? | 2015-10-29 09:00 | 2015-10-30 09:00 | 7 |  |  |  |  | 24h |  |
| 34 | 5.1.1 | 测量流程 | manual | 0.5d | 2015-11-05 09:00 | 2015-11-05 14:00 |  |  |  |  | 叶庆玉 | 4h |  |
| 35 | 5.1.2 | 体脂规则库 | manual | 0.5d | 2015-11-05 09:00 | 2015-11-05 14:00 |  |  |  |  | 华顺财 | 4h |  |
| 36 | 5.1.3 | 体脂曲线 | manual | 0.5d | 2015-11-05 09:00 | 2015-11-05 14:00 |  |  |  |  | 柳兆峰 | 4h |  |
| 37 | 5.1.4 | 体脂数据同步 | manual | 0.5d | 2015-11-05 09:00 | 2015-11-05 14:00 |  |  |  |  | 林涛 | 4h |  |
| 38 | 5.1.5 | 水平刻度控件 | manual | 0.5d | 2015-11-05 09:00 | 2015-11-05 14:00 |  |  |  |  | 林涛 | 4h |  |
| 39 | 5.1.6 | 数据列表 | manual | 0.5d | 2015-11-05 09:00 | 2015-11-05 14:00 |  |  |  |  | 叶庆玉 | 4h |  |
| 40 | 5.2 | 血氧长期曲线 | manual | 0.5d | 2015-11-04 08:00 | 2015-11-04 12:00 | 15 |  |  |  | 林涛 | 4h |  |
| 42 | 6 | **V1.1** |  | 23d | 2015-10-29 09:00 | 2015-11-30 18:00 |  | 27% | 16.87d | 2015-11-04 09:00 |  | 38.4h | 12.8h |
| 43 | 6.1 | 育儿模块 | manual | 1d | 2015-11-04 09:00 | 2015-11-05 09:00 |  |  |  |  | 华顺财; 林涛 | 16h |  |
| 44 | 6.2 | **尿检模块接入** |  | 14d | 2015-11-10 09:00 A | 2015-11-30 09:00 | 17 | 40% | 8.4d |  |  | 22.4h | 12.8h |
| 45 | 6.2.1 | 测量流程 | manual | 0.3d | 2015-11-10 09:00 A | 2015-11-10 11:24 A |  | 100% |  |  | 柳兆峰; 叶庆玉 | 4.8h | 4.8h |
| 46 | 6.2.2 | 首页显示 | manual | 0.2d | 2015-11-10 09:00 A | 2015-11-10 10:36 A |  | 100% |  |  | 柳兆峰; 叶庆玉 | 3.2h | 3.2h |
| 47 | 6.2.3 | 数据列表 | manual | 0.3d | 2015-11-10 09:00 A | 2015-11-10 11:24 A |  | 100% |  |  | 柳兆峰; 叶庆玉 | 4.8h | 4.8h |
| 48 | 6.2.4 | 统计分析 | manual | 0.3d | 2015-11-10 09:00 | 2015-11-10 11:24 |  |  |  |  | 叶庆玉 | 2.4h |  |
| 49 | 6.2.5 | 近期曲线 | manual | 0.3d | 2015-11-10 09:00 | 2015-11-10 11:24 |  |  |  |  | 柳兆峰 | 2.4h |  |
| 50 | 6.2.6 | 尿检规则库 | manual | 0.3d | 2015-11-10 09:00 | 2015-11-10 11:24 |  |  |  |  | 华顺财 | 2.4h |  |
| 51 | 6.2.7 | 数据同步 | manual | 0.3d | 2015-11-10 09:00 | 2015-11-10 11:24 |  |  |  |  | 林涛 | 2.4h |  |
